# Simple Project Plan

Schedule from MS Project, 2024-03-01 to 2024-05-03, costs in ¥.

## Calendars

- Standard: Mon-Fri 08:00-12:00, 13:00-17:00; Sat-Sun off.

## Resources

| Resource | Rate |
| --- | --- |
| 龙凯锋 | 120 |
| 梁宇豪 | 100 |
| 庄子岳 | 100 |
| 杨宗韬 | 60 |
| 张喆 | 60 |
| 刘钰 | 60 |
| 陈玺 | 100 |
| 钟锦正 | 50 |
| 周志龙 | 120 |
| 吴威廉 | 90 |
| 谭金林 | 80 |

## Schedule

| ID | WBS | Task | Type | Duration | Start | Finish | Predecessors | Baseline start | Baseline finish | Baseline duration | Total slack | Free slack | Constraint | Deadline | Resources | Work | Cost | Baseline cost |
| --- | --- | --- | --- | --- | --- | --- | --- | --- | --- | --- | --- | --- | --- | --- | --- | --- | --- | --- |
| 1 | 1 | **项目前期准备** |  | 18d | 2024-03-01 | 2024-03-26 |  | 2024-03-01 | 2024-03-26 | 18d |  |  |  |  |  | 80h | 8,960 | 8,960 |
| 2 | 1.1 | 与甲方沟通，获取用户需求 |  | 2d | 2024-03-01 | 2024-03-04 |  | 2024-03-01 | 2024-03-04 | 2d | 0d |  | finish no later than 2024-03-08 |  | 庄子岳 | 16h | 1,600 | 1,600 |
| 3 | 1.2 | 编写《软件需求规格说明文档》 |  | 2d | 2024-03-05 | 2024-03-06 | 2 | 2024-03-05 | 2024-03-06 | 2d | 0d |  |  |  | 龙凯锋; 庄子岳 | 32h | 3,520 | 3,520 |
| 4 | 1.3 | 编写《软件项目计划书》 |  | 3d | 2024-03-07 | 2024-03-11 | 3 | 2024-03-07 | 2024-03-11 | 3d | 0d |  |  |  | 龙凯锋 | 24h | 2,880 | 2,880 |
| 5 | 1.4 | 完成人员和资源分配 |  | 1d | 2024-03-12 | 2024-03-12 | 4 | 2024-03-12 | 2024-03-12 | 1d | 0d |  |  | 2024-03-15 | 龙凯锋 | 8h | 960 | 960 |
| 6 | 1.5 | <项目前期准备完成> | milestone | 0d | 2024-03-12 | 2024-03-12 | 5 | 2024-03-12 | 2024-03-12 | 0d | 0d |  |  |  |  |  |  |  |
| 7 | 2 | **项目编码，开发项目原型** |  | 20d | 2024-03-12 | 2024-04-08 |  | 2024-03-12 | 2024-04-08 | 20d | 0d |  |  |  |  | 1080h | 86,560 | 86,560 |
| 8 | 2.1 | 编写软件测试计划 |  | 3d | 2024-03-13 | 2024-03-15 | 6 | 2024-03-13 | 2024-03-15 | 3d | 0d |  |  |  | 陈玺 | 24h | 2,400 | 2,400 |
| 9 | 2.2 | 完成软件架构设计、数据库设计 |  | 2d | 2024-03-12 | 2024-03-13 | 4 | 2024-03-12 | 2024-03-13 | 2d | 2d | 0d |  |  | 梁宇豪; 龙凯锋 | 32h | 3,520 | 3,520 |
| 10 | 2.3 | 完成软件的原型开发 |  | 16d | 2024-03-14 | 2024-04-04 | 9 | 2024-03-14 | 2024-04-04 | 16d | 2d |  |  |  | 梁宇豪; 杨宗韬; 张喆; 刘钰; 龙凯锋; 谭金林 | 768h | 61,440 | 61,440 |
| 11 | 2.4 | 软件单元测试工作 |  | 16d | 2024-03-18 | 2024-04-08 | 8 | 2024-03-18 | 2024-04-08 | 16d | 0d |  | start no earlier than 2024-03-18 |  | 陈玺; 钟锦正 | 256h | 19,200 | 19,200 |
| 12 | 2.5 | 原型开发完成 | milestone | 0d | 2024-04-08 | 2024-04-08 | 11 | 2024-04-08 | 2024-04-08 | 0d | 0d |  |  |  |  |  |  |  |
| 13 | 3 | **原型迭代，增加功能，集成测试** |  | 8d | 2024-04-09 | 2024-04-18 | 7 | 2024-04-09 | 2024-04-18 | 8d | 0d |  |  |  |  | 440h | 35,840 | 35,840 |
| 14 | 3.1 | ui设计 |  | 8d | 2024-04-09 | 2024-04-18 |  | 2024-04-09 | 2024-04-18 | 8d | 1d | 0d |  |  | 吴威廉; 周志龙 | 128h | 13,440 | 13,440 |
| 15 | 3.2 | 增加数据分析模块，数据报模块，用户管理模块 |  | 5d | 2024-04-09 | 2024-04-15 | 12 | 2024-04-09 | 2024-04-15 | 5d | 0d |  |  |  | 张喆; 钟锦正; 梁宇豪; 谭金林 | 160h | 11,600 | 11,600 |
| 16 | 3.3 | 同步单元测试 |  | 5d | 2024-04-09 | 2024-04-15 |  | 2024-04-09 | 2024-04-15 | 5d | 0d |  |  |  | 钟锦正; 陈玺 | 80h | 6,000 | 6,000 |
| 17 | 3.4 | 集成测试 |  | 3d | 2024-04-16 | 2024-04-18 | 15, 16 | 2024-04-16 | 2024-04-18 | 3d | 0d |  |  |  | 钟锦正; 陈玺 | 72h | 4,800 | 4,800 |
| 18 | 3.5 | 迭代完成 | milestone | 0d | 2024-04-18 | 2024-04-18 | 17 | 2024-04-18 | 2024-04-18 | 0d | 0d |  |  |  |  |  |  |  |
| 19 | 4 | **获取用户反馈，确认ui设计** |  | 4d | 2024-04-19 | 2024-04-24 | 18 | 2024-04-19 | 2024-04-24 | 4d | 0d |  |  |  |  | 152h | 14,160 | 14,160 |
| 20 | 4.1 | 获取用户反馈 |  | 1d | 2024-04-19 | 2024-04-19 | 18 | 2024-04-19 | 2024-04-19 | 1d | 0d |  | start no earlier than 2024-04-19 |  | 庄子岳; 龙凯锋 | 8h | 960 | 960 |
| 21 | 4.2 | 对用户反馈的需求进行修改 |  | 3d | 2024-04-19 | 2024-04-24 | 20 | 2024-04-19 | 2024-04-24 | 3d | 0d |  |  |  | 钟锦正; 陈玺; 梁宇豪; 杨宗韬; 张喆 | 96h | 7,440 | 7,440 |
| 22 | 4.3 | 与用户沟通确认ui设计以及系统功能 |  | 3d | 2024-04-19 | 2024-04-23 | 14 | 2024-04-19 | 2024-04-23 | 3d | 1d |  | start no earlier than 2024-04-19 |  | 龙凯锋; 周志龙; 庄子岳 | 48h | 5,760 | 5,760 |
| 23 | 5 | **系统测试运行，完善文档** |  | 5d | 2024-04-25 | 2024-05-01 | 19 | 2024-04-25 | 2024-05-01 | 5d | 0d |  |  |  |  | 128h | 11,680 | 11,680 |
| 24 | 5.1 | 系统测试运行，收集用户反馈，编写测试报告 |  | 3d | 2024-04-25 | 2024-04-29 | 22 | 2024-04-25 | 2024-04-29 | 3d | 0d |  |  |  | 梁宇豪; 杨宗韬; 张喆; 龙凯锋 | 96h | 8,160 | 8,160 |
| 25 | 5.2 | 编写用户手册，常见问题说明手册 |  | 2d | 2024-04-30 | 2024-05-01 | 24 | 2024-04-30 | 2024-05-01 | 2d | 0d |  |  |  | 梁宇豪; 龙凯锋 | 32h | 3,520 | 3,520 |

Notes:
- 1: 这是摘要任务。使用摘要任务以帮助您在节中组织项目。
- 4: 这是里程碑任务。将任务工期设置为 0d 以标记项目中的事件。
- 10: 实现完成初版系统的基本功能，包括数据的提交、修改、查询、导出等工能，并进行单元测试。
- 15: 在其旁边带有图钉的任务为手动计划任务。当您不想让 Project 移动任务时请使用它们。如果您尚未获得所有信息，您也可以在工期、开始和完成字段输入任意文本或将其保留为空。

| ID | WBS | Task | Duration | Start | Finish | Predecessors | Baseline start | Baseline finish | Baseline duration | Total slack | Resources | Work | Cost | Baseline cost |
| --- | --- | --- | --- | --- | --- | --- | --- | --- | --- | --- | --- | --- | --- | --- |
| 26 | 6 | **项目验收以及运营维护** | 2d | 2024-05-02 | 2024-05-03 | 23 | 2024-05-02 | 2024-05-03 | 2d | 0d |  | 16h | 1,920 | 1,920 |
| 27 | 6.1 | 完成项目评审验收工作 | 2d | 2024-05-02 | 2024-05-03 |  | 2024-05-02 | 2024-05-03 | 2d | 0d | 龙凯锋 | 16h | 1,920 | 1,920 |
